# 甘特图1

Schedule from MS Project, 2017-09-28 to 2018-01-18, status date 2017-11-11, 3 hours a day, costs in ¥, A marks actual dates.

## Calendars

- “24 小时”的副本: Mon-Sun 19:00-21:00.

## Resources

| Resource | Rate |
| --- | --- |
| 李文杰 | 30.97 |
| 赵伟 | 30.97 |
| 陈启强 | 30.97 |
| 余泽伟 | 30.97 |

## Schedule

| ID | WBS | Task | Type | Duration | Start | Finish | Predecessors | Complete | Remaining | Actual start | Baseline start | Baseline finish | Baseline duration | Constraint | Resources | Work | Actual work | Cost | Baseline cost | Actual cost |
| --- | --- | --- | --- | --- | --- | --- | --- | --- | --- | --- | --- | --- | --- | --- | --- | --- | --- | --- | --- | --- |
| 1 | 11 | **项目启动** |  | 15.33d | 2017-09-28 A | 2017-10-20 |  | 65% | 5.33d |  | 2017-09-28 | 2017-10-20 | 15.33d |  |  | 44.9h | 38.85h | 1,390.55 | 2,085.85 | 1,203.18 |
| 2 | 11.1 | 团队建立 | manual | 1d | 2017-09-28 A | 2017-09-29 |  | 67% | 0.33d |  | 2017-09-28 | 2017-09-28 | 0.67d |  | 李文杰 [30%]; 余泽伟 [30%]; 赵伟 [30%]; 陈启强 [30%] | 3.95h | 3.05h | 122.33 | 87.93 | 94.46 |
| 3 | 11.2 | 搜集文档模板并确定模版标准 | manual | 1d | 2017-09-29 A | 2017-09-30 A | 2 | 100% |  |  | 2017-09-29 | 2017-10-01 | 2d |  | 李文杰 [30%]; 赵伟 [30%]; 余泽伟 [30%]; 陈启强 [30%] | 6h | 6h | 185.82 | 345.96 | 185.82 |
| 4 | 11.3 | 软件安装 | manual | 3.67d | 2017-10-02 A | 2017-10-07 | 3 | 82% | 0.67d |  | 2017-10-02 | 2017-10-06 | 3.33d |  | 李文杰 [20%]; 余泽伟 [20%]; 赵伟 [20%]; 陈启强 [20%] | 8.8h | 7.2h | 272.54 | 230.64 | 222.98 |
| 5 | 11.4 | 撰写《可行性研究报告》并进行初次提交 | manual | 5d | 2017-10-02 A | 2017-10-08 | 3 | 80% | 1d |  | 2017-10-02 | 2017-10-07 | 4d | start no earlier than 2017-10-02 | 赵伟 [50%] | 13.5h | 12h | 418.1 | 345.96 | 371.64 |
| 6 | 11.5 | 撰写《项目开发设计》报告并进行初次提交 | manual | 3.5d | 2017-10-08 A | 2017-10-12 A | 2, 3, 4, 5 | 100% |  |  | 2017-10-08 | 2017-10-13 | 4d |  | 陈启强 [20%]; 李文杰 [20%] | 10.5h | 10.5h | 325.19 | 345.96 | 325.19 |
| 7 | 11.6 | 修改《可行性研究报告》 | manual | 4.17d | 2017-10-08 A | 2017-10-13 | 5 |  | 4.17d |  | 2017-10-08 | 2017-10-14 | 4.67d | start no earlier than 2017-10-08 | 赵伟 [10%] | 1.25h |  | 38.71 | 322.9 |  |
| 8 | 11.7 | 修改《项目开发设计》报告 | manual | 0.67d | 2017-10-14 A | 2017-10-19 | 6 |  | 0.67d |  | 2017-10-14 | 2017-10-20 | 4.67d |  | 陈启强 [20%]; 李文杰 [20%] | 0.8h |  | 24.78 | 403.62 |  |
| 9 | 11.8 | 提交《可行性研究报告》与《项目开发设计》报告 | manual | 0.67d | 2017-10-15 A | 2017-10-15 A | 7 | 100% |  |  | 2017-10-15 | 2017-10-15 | 0.67d |  | 陈启强 [5%] | 0.1h | 0.1h | 3.1 | 2.88 | 3.1 |
| 10 | 12 | **项目规划** |  | 59.67d | 2017-10-09 | 2018-01-05 | 1 | 54% | 27.22d | 2017-09-29 | 2017-10-20 | 2017-11-03 | 10d |  |  | 154.02h | 112.8h | 4,770 | 5,817.89 | 3,493.42 |
| 11 | 12.8 | 撰写WBS图、OBS图、gantt图 | manual | 3.67d | 2017-10-09 A | 2017-10-13 | 5 | 36% | 2.33d |  | 2017-10-16 | 2017-10-17 | 1.33d | start no earlier than 2017-10-09 | 李文杰 [40%] | 6.8h | 4h | 210.6 | 345.96 | 123.88 |
| 12 | 12.1 | 撰写《项目章程》 | manual | 2.83d | 2017-10-16 A | 2017-10-19 A | 9 | 100% |  |  | 2017-10-16 | 2017-10-20 | 3.33d | start no earlier than 2017-10-20 | 赵伟 [50%]; 陈启强 [10%] | 8.5h | 8.5h | 263.25 | 288.3 | 263.25 |
| 13 | 12.3 | 撰写《需求工程计划--初步》并提交 | manual | 2.83d | 2017-10-16 A | 2017-10-19 A | 9 | 100% |  |  | 2017-10-16 | 2017-10-20 | 3.33d |  | 余泽伟 [50%] | 8.5h | 8.5h | 263.25 | 288.3 | 263.25 |
| 14 | 12.4 | UML概述ppt制作 | manual | 2.67d | 2017-10-23 A | 2017-10-26 A |  | 100% |  |  | 2017-10-25 | 2017-10-28 | 2.67d |  | 余泽伟 [50%] | 8h | 8h | 247.76 | 230.64 | 247.76 |
| 15 | 12.5 | UML概述ppt制作 | manual | 2.67d | 2017-10-30 A | 2017-11-02 A |  | 100% |  |  | 2017-10-25 | 2017-10-28 | 2.67d |  | 李文杰 [50%] | 8h | 8h | 247.76 | 230.64 | 247.76 |
| 16 | 12.6 | UML概述ppt制作 | manual | 3d | 2017-11-06 | 2017-11-09 |  |  |  |  | 2017-11-10 | 2017-11-12 | 2.33d |  | 李文杰 [50%] | 4.5h |  | 139.37 | 201.81 |  |
| 17 | 12.7 | UML概述ppt制作 | manual | 1d | 2017-11-19 A | 2017-11-19 A |  | 100% |  |  | 2017-10-25 | 2017-10-28 | 2.67d |  | 陈启强 [200%] | 3h | 3h | 92.91 | 230.64 | 92.91 |
| 18 | 12.24 | 例会 | manual | 1d | 2017-09-29 A | 2017-09-29 |  | 30% | 0.7d |  |  |  |  |  | 陈启强 [20%]; 李文杰 [20%]; 余泽伟 [20%]; 赵伟 [20%] | 5.28h | 3.6h | 163.52 |  | 111.49 |
| 19 | 12.23 | 例会 | manual | 1d | 2017-10-13 A | 2017-10-13 |  | 30% | 0.7d |  |  |  |  |  | 陈启强 [20%]; 李文杰 [20%]; 余泽伟 [20%]; 赵伟 [20%] | 5.28h | 3.6h | 163.52 |  | 111.49 |
| 20 | 12.22 | 例会 | manual | 1d | 2017-10-20 A | 2017-10-20 |  | 30% | 0.7d |  |  |  |  |  | 陈启强 [20%]; 李文杰 [20%]; 余泽伟 [20%]; 赵伟 [20%] | 5.28h | 3.6h | 163.52 |  | 111.49 |
| 21 | 12.21 | 例会 | manual | 1d | 2017-10-27 A | 2017-10-27 |  | 30% | 0.7d |  |  |  |  |  | 陈启强 [20%]; 李文杰 [20%]; 余泽伟 [20%]; 赵伟 [20%] | 5.28h | 3.6h | 163.52 |  | 111.49 |
| 22 | 12.20 | 例会 | manual | 1d | 2017-11-04 A | 2017-11-04 |  | 30% | 0.7d |  |  |  |  |  | 陈启强 [20%]; 李文杰 [20%]; 余泽伟 [20%]; 赵伟 [20%] | 5.28h | 3.6h | 163.52 |  | 111.49 |
| 23 | 12.19 | 例会 | manual | 1d | 2017-11-10 | 2017-11-10 |  |  |  |  |  |  |  |  | 陈启强 [20%]; 李文杰 [20%]; 余泽伟 [20%]; 赵伟 [20%] | 2.4h |  | 74.33 |  |  |
| 24 | 12.18 | 例会 | manual | 1d | 2017-11-18 | 2017-11-18 |  |  |  |  |  |  |  |  | 陈启强 [20%]; 李文杰 [20%]; 余泽伟 [20%]; 赵伟 [20%] | 2.4h |  | 74.33 |  |  |
| 25 | 12.17 | 例会 | manual | 1d | 2017-11-24 | 2017-11-24 |  |  |  |  |  |  |  |  | 陈启强 [20%]; 李文杰 [20%]; 余泽伟 [20%]; 赵伟 [20%] | 2.4h |  | 74.33 |  |  |
| 26 | 12.16 | 例会 | manual | 1d | 2017-12-01 | 2017-12-01 |  |  |  |  |  |  |  |  | 陈启强 [20%]; 李文杰 [20%]; 余泽伟 [20%]; 赵伟 [20%] | 2.4h |  | 74.33 |  |  |
| 27 | 12.15 | 例会 | manual | 1d | 2017-12-08 | 2017-12-09 |  |  |  |  |  |  |  |  | 陈启强 [20%]; 李文杰 [20%]; 余泽伟 [20%]; 赵伟 [20%] | 2.4h |  | 74.33 |  |  |
| 28 | 12.26 | 例会 | manual | 1d | 2017-12-15 | 2017-12-16 |  |  |  |  |  |  |  |  | 陈启强 [20%]; 李文杰 [20%]; 余泽伟 [20%]; 赵伟 [20%] | 2.4h |  | 74.33 |  |  |
| 29 | 12.25 | 例会 | manual | 1d | 2017-12-22 | 2017-12-23 |  |  |  |  |  |  |  |  | 陈启强 [20%]; 李文杰 [20%]; 余泽伟 [20%]; 赵伟 [20%] | 2.4h |  | 74.33 |  |  |
| 30 | 12.14 | 例会 | manual | 1d | 2017-12-29 | 2017-12-30 |  |  |  |  |  |  |  |  | 陈启强 [20%]; 李文杰 [20%]; 余泽伟 [20%]; 赵伟 [20%] | 2.4h |  | 74.33 |  |  |
| 31 | 12.27 | 例会 | manual | 0.3d | 2018-01-05 | 2018-01-05 |  |  |  |  |  |  |  |  | 陈启强 [20%]; 李文杰 [20%]; 余泽伟 [20%]; 赵伟 [20%] | 0.72h |  | 22.3 |  |  |
| 32 | 12.9 | 提交《项目章程》、《项目总体计划》 | manual | 0.67d | 2017-10-25 A | 2017-10-25 A | 12 | 100% |  |  | 2017-10-25 | 2017-10-25 | 0.67d |  | 陈启强 [5%] | 0.1h | 0.1h | 3.1 | 2.88 | 3.1 |
| 33 | 12.10 | 撰写《QA计划》 | manual | 3.5d | 2017-10-30 A | 2017-11-03 A | 32 | 100% |  |  | 2017-10-30 | 2017-11-05 | 4.83d |  | 赵伟 [20%] | 10.5h | 10.5h | 325.19 | 418.03 | 325.19 |
| 34 | 12.11 | 提交《QA计划》和项目各类修改文档 | manual | 0.67d | 2017-11-05 A | 2017-11-05 A | 33 | 100% |  |  | 2017-11-05 | 2017-11-05 | 0.67d |  | 陈启强 [10%] | 0.2h | 0.2h | 6.19 | 5.77 | 6.19 |
| 35 | 12.12 | 修改《需求工程项目计划》 | manual | 4.67d | 2017-10-28 A | 2017-11-03 A | 13 | 100% |  |  | 2017-10-28 | 2017-11-03 | 4.67d |  | 余泽伟; 陈启强 [20%] | 14h | 14h | 433.58 | 1,614.48 | 433.58 |

| ID | WBS | Task | Type | Duration | Start | Finish | Predecessors | Complete | Remaining | Actual start | Baseline start | Baseline finish | Baseline duration | Total slack | Constraint | Resources | Work | Actual work | Cost | Baseline cost | Actual cost |
| --- | --- | --- | --- | --- | --- | --- | --- | --- | --- | --- | --- | --- | --- | --- | --- | --- | --- | --- | --- | --- | --- |
| 36 | 12.13 | **修改《需求工程项目计划》** |  | 4.33d | 2017-10-21 A | 2017-10-26 | 13 | 46% | 2.33d |  | 2016-11-01 | 2016-11-06 | 4d |  |  |  | 35.6h | 30h | 1,102.53 | 1,383.84 | 929.1 |
| 37 | 12.13.1 | 修改《成本管理计划》 | manual | 4.33d | 2017-10-21 A | 2017-10-26 | 13 | 46% | 2.33d |  | 2017-10-21 | 2017-10-23 | 2d |  |  | 李文杰 [10%]; 赵伟 [10%] | 7.4h | 6h | 229.18 | 172.98 | 185.82 |
| 38 | 12.13.2 | 修改《风险管理计划》 | manual | 4.33d | 2017-10-21 A | 2017-10-26 | 13 | 46% | 2.33d |  | 2017-10-21 | 2017-10-23 | 2d |  |  | 李文杰 [10%] | 6.7h | 6h | 207.5 | 172.98 | 185.82 |
| 39 | 12.13.3 | 修改《范围管理计划》 | manual | 4.33d | 2017-10-21 A | 2017-10-26 | 13 | 46% | 2.33d |  | 2017-10-21 | 2017-10-23 | 2d |  |  | 李文杰 [10%] | 6.7h | 6h | 207.5 | 172.98 | 185.82 |
| 40 | 12.13.4 | 修改《质量管理计划》 | manual | 4.33d | 2017-10-21 A | 2017-10-26 | 13 | 46% | 2.33d |  | 2017-10-21 | 2017-10-23 | 2d |  |  | 余泽伟 [20%] | 7.4h | 6h | 229.18 | 172.98 | 185.82 |
| 41 | 12.13.5 | 修改《人力资源管理计划》 | manual | 4.33d | 2017-10-21 A | 2017-10-26 | 13 | 46% | 2.33d |  | 2017-10-21 | 2017-10-23 | 2d |  |  | 李文杰 [10%]; 赵伟 [10%] | 7.4h | 6h | 229.18 | 691.92 | 185.82 |
| 42 | 13 | **项目执行** |  | 32.33d | 2017-11-04 | 2017-12-21 | 10 | 10% | 28.95d | 2017-11-02 | 2017-11-05 | 2017-12-26 | 34.67d |  |  |  | 113.81h | 24.49h | 3,524.84 | 5,853.93 | 758.46 |
| 43 | 13.1 | 《需求工程项目计划》评审 | milestone, manual | 0.83d | 2017-11-04 A | 2017-11-04 A | 35 | 100% |  |  | 2017-11-04 | 2017-11-07 | 2.67d |  | start no earlier than 2017-11-03 | 陈启强; 李文杰 [20%]; 余泽伟 [20%]; 赵伟 [20%] | 10h | 10h | 309.7 | 922.56 | 309.7 |
| 44 | 13.2 | 修改《需求工程项目计划》 | manual | 2.33d | 2017-11-05 A | 2017-11-07 | 43 | 36% | 1.5d |  | 2017-11-06 | 2017-11-07 | 1.33d |  |  | 余泽伟 [50%] | 5.25h | 3h | 162.59 | 92.26 | 92.91 |
| 45 | 13.3 | 提交《需求工程项目计划》 | manual | 0.33d | 2017-11-11 A | 2017-11-11 A | 44 | 100% |  |  | 2017-11-08 | 2017-11-08 | 0.67d |  |  | 陈启强 [5%] | 0.99h | 0.99h | 30.66 | 2.88 | 30.66 |
| 46 | 13.5 | **需求获取** |  | 19.33d | 2017-11-05 | 2017-12-03 |  |  |  |  |  |  |  | 0d |  |  | 36.37h |  | 1,126.52 |  |  |
| 47 | 13.5.2 | 草拟《前景与范围》 | manual | 2d | 2017-11-05 | 2017-11-07 | 43 |  |  |  |  |  |  |  |  | 李文杰 [20%] | 1.2h |  | 37.16 |  |  |
| 48 | 13.5.1 | 第一次访谈客户代表 | manual | 0.33d | 2017-11-13 | 2017-11-13 | 47 |  |  |  | 2017-11-07 | 2017-11-07 | 0.33d |  |  | 陈启强; 李文杰; 余泽伟; 赵伟 | 4h |  | 123.88 | 115.32 |  |
| 49 | 13.5.17 | 界面原型设计-初步 | manual | 3.67d | 2017-11-14 | 2017-11-19 | 48 |  |  |  | 2017-11-16 | 2017-11-18 | 2d |  |  | 陈启强 [30%]; 余泽伟 [30%]; 赵伟 [30%]; 李文杰 [30%] | 13.2h |  | 408.8 | 172.98 |  |
| 50 | 13.4.8 | 第一次访谈教师代表 | manual | 0.33d | 2017-11-20 | 2017-11-20 | 49 |  |  |  | 2017-11-07 | 2017-11-07 | 0.67d |  |  | 陈启强 [50%]; 李文杰 [50%]; 余泽伟 [50%]; 赵伟 [5%] | 1.53h |  | 47.52 | 230.64 |  |
| 51 | 13.4.9 | 修改界面原型 | manual | 1.67d | 2017-11-25 | 2017-11-26 | 50 |  |  |  | 2017-11-19 | 2017-11-20 | 1.33d |  |  | 陈启强 [30%]; 李文杰 [30%]; 余泽伟 [30%]; 赵伟 [30%] | 4.5h |  | 139.37 | 115.32 |  |
| 52 | 3.4.6 | 第一次访谈管理员代表 | manual | 0.33d | 2017-11-28 | 2017-11-28 | 49 |  |  |  |  |  |  |  |  | 陈启强 [50%]; 李文杰 [50%]; 余泽伟 [50%]; 赵伟 [50%] | 1.98h |  | 61.32 |  |  |
| 53 | 13.4.15 | 第二次访谈教师代表 | manual | 0.33d | 2017-12-01 | 2017-12-01 | 50 |  |  |  | 2017-12-05 | 2017-12-05 | 0.67d |  |  | 陈启强 [50%]; 李文杰 [50%]; 余泽伟 [50%]; 赵伟 [50%] | 1.98h |  | 61.32 | 230.64 |  |
| 54 | 3.4.8 | 第一次访谈学生代表 | manual | 0.33d | 2017-12-02 | 2017-12-02 | 50 |  |  |  |  |  |  |  |  | 陈启强 [50%]; 李文杰 [50%]; 余泽伟 [50%]; 赵伟 [50%] | 1.98h |  | 61.32 |  |  |
| 55 | 13.5.18 | 修改界面原型 | manual | 1.67d | 2017-12-02 | 2017-12-03 | 53 |  |  |  |  |  |  |  |  | 陈启强 [30%]; 李文杰 [30%]; 余泽伟 [30%]; 赵伟 [30%] | 6h |  | 185.82 |  |  |
| 56 | 13.4 | **需求分析** |  | 31.67d | 2017-11-08 | 2017-12-24 | 43 | 9% | 28.78d | 2017-11-02 | 2017-11-13 | 2017-12-26 | 29.33d |  |  |  | 61.2h | 10.5h | 1,895.36 | 4,836.23 | 325.19 |
| 57 | 13.4.1 | **撰写《用户代表确认文档》** |  | 1d | 2017-11-21 A | 2017-11-21 A | 43 | 100% |  |  | 2017-11-14 | 2017-11-15 | 1.33d |  |  |  | 6h | 6h | 185.82 | 172.98 | 185.82 |
| 58 | 13.4.1.1 | 撰写《教师代表确认文档》 | manual | 0.67d | 2017-11-21 A | 2017-11-21 A | 43 | 100% |  |  | 2017-11-08 | 2017-11-08 | 0.67d |  |  | 陈启强 [30%] | 2h | 2h | 61.94 | 57.66 | 61.94 |
| 59 | 13.4.1.2 | 撰写《学生代表确认文档》 | manual | 0.67d | 2017-11-21 A | 2017-11-21 A | 43 | 100% |  |  | 2017-11-08 | 2017-11-08 | 0.67d |  |  | 陈启强 [30%] | 2h | 2h | 61.94 | 57.66 | 61.94 |
| 60 | 13.4.1.3 | 撰写《管理员代表确认文档》 | manual | 0.67d | 2017-11-21 A | 2017-11-21 A | 43 | 100% |  |  | 2017-11-08 | 2017-11-08 | 0.67d |  |  | 陈启强 [30%] | 2h | 2h | 61.94 | 57.66 | 61.94 |

| ID | WBS | Task | Type | Duration | Start | Finish | Predecessors | Complete | Remaining | Baseline start | Baseline finish | Baseline duration | Total slack | Resources | Work | Actual work | Cost | Baseline cost | Actual cost |
| --- | --- | --- | --- | --- | --- | --- | --- | --- | --- | --- | --- | --- | --- | --- | --- | --- | --- | --- | --- |
| 61 | 13.4.3 | **撰写用例文档** |  | 6.83d | 2017-11-17 | 2017-11-26 | 49 |  |  | 2017-11-17 | 2017-11-22 | 3.67d |  |  | 5.6h |  | 173.43 | 691.92 |  |
| 62 | 13.4.3.1 | 撰写《教师用例文档》 | manual | 2.33d | 2017-11-23 | 2017-11-26 | 49 |  |  | 2017-11-19 | 2017-11-21 | 2d |  | 赵伟 [20%] | 1.4h |  | 43.36 | 172.98 |  |
| 63 | 13.4.3.2 | 撰写《学生用例文档》 | manual | 2.33d | 2017-11-23 | 2017-11-26 | 49 |  |  | 2017-11-19 | 2017-11-21 | 2d |  | 陈启强 [20%] | 1.4h |  | 43.36 | 172.98 |  |
| 64 | 13.4.3.3 | 撰写《管理员用例文档》 | manual | 2.33d | 2017-11-23 | 2017-11-26 | 49 |  |  | 2017-11-19 | 2017-11-21 | 2d |  | 余泽伟 [20%] | 1.4h |  | 43.36 | 172.98 |  |
| 65 | 13.4.3.4 | 撰写《游客用例文档》 | manual | 2.33d | 2017-11-23 | 2017-11-26 | 49 |  |  | 2017-11-19 | 2017-11-21 | 2d |  | 陈启强 [20%] | 1.4h |  | 43.36 | 172.98 |  |
| 66 | 13.4.4 | 《前景与范围文档》修改 | manual | 1.67d | 2017-11-14 | 2017-11-15 | 49 |  |  | 2017-11-19 | 2017-11-19 | 0.67d |  | 李文杰 [30%] | 1.5h |  | 46.45 | 57.66 |  |
| 67 | 13.4.13 | 撰写《数据字典》 | manual | 1.67d | 2017-11-23 | 2017-11-25 | 50 |  |  | 2017-11-07 | 2017-11-08 | 0.67d |  | 余泽伟 [20%] | 1h |  | 30.97 | 345.96 |  |
| 68 | 13.4.5 | 提交《用例与用例文档》、界面原型、《前景与范围》、《用户群分类》 | manual | 0.67d | 2017-11-26 | 2017-11-26 | 57, 61, 66 |  |  | 2017-11-20 | 2017-11-20 | 0.67d |  | 陈启强 [5%] | 0.1h |  | 3.1 | 2.88 |  |
| 69 | 13.4.10 | 修改《教师用例文档》 | manual | 1.33d | 2017-11-28 | 2017-11-29 | 62 |  |  | 2017-11-22 | 2017-11-23 | 1.33d |  | 赵伟 [20%] | 0.8h |  | 24.78 | 92.26 |  |
| 70 | 13.4.23 | 修改《管理员用例文档》 | manual | 0.67d | 2017-11-28 | 2017-11-28 | 64 |  |  | 2017-11-22 | 2017-11-22 | 0.67d |  | 赵伟 [20%] | 0.4h |  | 12.39 | 46.13 |  |
| 71 | 13.4.12 | 草拟需求规格说明书 | manual | 3d | 2017-11-30 | 2017-12-03 | 68 |  |  | 2017-11-21 | 2017-11-23 | 2d |  | 陈启强 [30%]; 李文杰 [30%]; 余泽伟 [30%]; 赵伟 [30%] | 10.8h |  | 334.48 | 691.92 |  |
| 72 | 13.4.32 | **撰写优先级排序表** |  | 0.67d? | 2017-12-02 | 2017-12-02 | 61 |  |  |  |  |  |  |  | 2.4h |  | 74.33 |  |  |
| 73 | 13.4.32.1 | 撰写《教师优先级打分表》 | manual | 1d | 2017-12-02 | 2017-12-02 | 61 |  |  |  |  |  |  | 陈启强 [20%]; 赵伟 [20%] | 1.2h |  | 37.16 |  |  |
| 74 | 13.4.32.2 | 撰写《学生优先级打分表》 | manual | 1d | 2017-11-02 | 2017-11-02 | 61 |  |  |  |  |  |  | 陈启强 [20%] | 0.6h |  | 18.58 |  |  |
| 75 | 13.4.32.3 | 撰写《管理员优先级打分表》 | manual | 1d | 2017-11-02 | 2017-11-02 | 61 |  |  |  |  |  |  | 陈启强 [20%] | 0.6h |  | 18.58 |  |  |
| 76 | 13.4.18 | 修改数据字典 | manual | 1.67d | 2017-11-28 A | 2017-11-30 | 67 | 90% | 0.17d | 2017-11-08 | 2017-11-11 | 2d |  | 陈启强 [20%] | 4.6h | 4.5h | 142.46 | 415.15 | 139.37 |
| 77 | 13.4.14 | 提交《用例与用例文档》、界面原型、ER图、《需求规格说明书》 | manual | 0.67d | 2017-12-03 | 2017-12-03 | 50 |  |  | 2017-12-04 | 2017-12-04 | 0.67d |  | 陈启强 [5%] | 0.1h |  | 3.1 | 57.66 |  |
| 78 | 13.4.22 | 修改《软件需求规格说明书》 | manual | 1.33d | 2017-12-04 | 2017-12-05 | 71 |  |  | 2017-11-24 | 2017-11-25 | 1.33d |  | 陈启强 [20%]; 余泽伟 [20%]; 赵伟 [20%]; 李文杰 [20%] | 3.2h |  | 99.1 | 92.26 |  |
| 79 | 13.4.31 | **编写测试用例** |  | 0.83d | 2017-11-28 | 2017-11-29 |  |  |  |  |  |  | 0d |  | 1.8h |  | 55.75 |  |  |
| 80 | 13.4.31.1 | 修改《教师测试用例》 | manual | 1d | 2017-11-28 | 2017-11-29 |  |  |  | 2017-11-25 | 2017-11-25 | 0.67d |  | 赵伟 [20%] | 0.6h |  | 18.58 | 46.13 |  |
| 81 | 13.4.31.2 | 编写《学生测试用例》 | manual | 1d | 2017-11-28 | 2017-11-28 |  |  |  |  |  |  |  | 赵伟 [20%] | 0.6h |  | 18.58 |  |  |
| 82 | 13.4.31.3 | 编写《管理员测试用例》 | manual | 1d | 2017-11-28 | 2017-11-28 |  |  |  |  |  |  |  | 李文杰 [20%] | 0.6h |  | 18.58 |  |  |
| 83 | 13.4.19 | 撰写《软件用户手册》 | manual | 2.33d | 2017-12-07 | 2017-12-10 | 68 |  |  | 2017-11-21 | 2017-11-21 | 0.67d |  | 赵伟 [20%] | 1.4h |  | 43.36 | 57.66 |  |
| 84 | 13.4.27 | 修改《软件用户手册》 | manual | 0.67d | 2017-12-15 | 2017-12-15 | 83 |  |  | 2017-12-15 | 2017-12-15 | 0.67d |  | 赵伟 [30%] | 0.6h |  | 18.58 | 57.66 |  |
| 85 | 13.4.28 | SRS评审 | milestone, manual | 3d | 2017-12-10 | 2017-12-14 | 78 |  |  | 2017-11-26 | 2017-11-30 | 3d |  | 陈启强; 李文杰 [20%]; 余泽伟 [20%]; 赵伟 [20%] | 14.4h |  | 445.97 | 12.97 |  |
| 86 | 13.4.29 | 修改《软件需求规格说明书》 | manual | 1.67d | 2017-12-15 | 2017-12-16 | 78 |  |  | 2017-12-23 | 2017-12-24 | 1.33d |  | 陈启强 [50%] | 2.5h |  | 77.43 | 92.26 |  |
| 87 | 13.4.30 | JAD会议 | manual | 0.67d | 2017-12-21 | 2017-12-21 | 85 |  |  | 2017-11-30 | 2017-12-01 | 0.67d |  | 李文杰 [50%]; 赵伟 [50%]; 余泽伟 [50%]; 陈启强 [50%] | 4h |  | 123.88 | 230.64 |  |

| ID | WBS | Task | Type | Duration | Start | Finish | Predecessors | Baseline start | Baseline finish | Baseline duration | Resources | Work | Cost | Baseline cost |
| --- | --- | --- | --- | --- | --- | --- | --- | --- | --- | --- | --- | --- | --- | --- |
| 88 | 14 | **项目控制** |  | 3.67d | 2017-12-20 | 2017-12-24 |  | 2017-12-25 | 2017-12-31 | 5d |  | 4.5h | 139.37 | 490.11 |
| 89 | 14.1 | **需求变更** |  | 3.67d | 2017-12-20 | 2017-12-24 | 85 | 2017-12-25 | 2017-12-29 | 3.67d |  | 3h | 92.91 | 345.96 |
| 90 | 14.1.1 | 撰写《需求变更文档》并提交 | manual | 1d | 2017-12-20 | 2017-12-20 | 85 | 2017-12-01 | 2017-12-04 | 2d | 赵伟 [50%]; 陈启强 [30%] | 2.4h | 74.33 | 172.98 |
| 91 | 14.1.2 | 撰写《需求变更申请报告》并提交 | manual | 1d | 2017-12-21 | 2017-12-21 | 85 | 2017-12-01 | 2017-12-04 | 2d | 陈启强 [20%] | 0.6h | 18.58 | 172.98 |
| 92 | 14.2 | 撰写CCB章程 | manual | 1.67d | 2017-12-22 | 2017-12-24 | 85 | 2017-12-01 | 2017-12-03 | 1.67d | 赵伟 [30%] | 1.5h | 46.45 | 144.15 |
| 93 | 15 | **项目收尾** |  | 11.67d | 2018-01-02 | 2018-01-18 | 42 | 2018-01-01 | 2018-01-17 | 11.33d |  | 23.9h | 740.18 | 1,667.82 |
| 94 | 15.1 | 撰写《项目绩效评价》 | manual | 1d | 2018-01-02 | 2018-01-03 | 92 | 2018-01-02 | 2018-01-03 | 1d | 余泽伟 [20%] | 0.6h | 18.58 | 129.73 |
| 95 | 15.2 | 撰写《系统设计与实现计划》 | manual | 1d | 2018-01-04 | 2018-01-05 | 92 | 2018-01-01 | 2018-01-02 | 1d | 赵伟 [30%] | 0.9h | 27.87 | 172.98 |
| 96 | 15.3 | 撰写《软件概要设计说明》 | manual | 2.5d | 2018-01-04 | 2018-01-07 | 92 | 2018-01-04 | 2018-01-07 | 2.5d | 陈启强 [30%] | 2.25h | 69.68 | 216.22 |
| 97 | 15.4 | 撰写《测试计划》 | manual | 1.5d | 2018-01-04 | 2018-01-05 | 92 | 2018-01-04 | 2018-01-05 | 1.5d | 赵伟 [30%] | 1.35h | 41.81 | 259.47 |
| 98 | 15.5 | 撰写《安装部署计划》 | manual | 2.5d | 2018-01-04 | 2018-01-07 | 92 | 2018-01-04 | 2018-01-07 | 2.5d | 余泽伟 [30%] | 2.25h | 69.68 | 324.34 |
| 99 | 15.6 | 撰写《培训计划》 | manual | 2d | 2018-01-04 | 2018-01-06 | 92 | 2018-01-06 | 2018-01-08 | 2d | 赵伟 [20%] | 1.2h | 37.16 | 172.98 |
| 100 | 15.7 | 撰写《系统维护计划》 | manual | 1.5d | 2018-01-04 | 2018-01-05 | 92 | 2018-01-09 | 2018-01-10 | 1.5d | 陈启强 [40%] | 1.8h | 55.75 | 129.73 |
| 101 | 15.8 | 修改整理各类旧文档及PPT | manual | 0.5d | 2018-01-10 | 2018-01-10 | 100 | 2018-01-11 | 2018-01-11 | 0.5d | 陈启强 [30%] | 0.45h | 13.94 | 172.98 |
| 102 | 15.9 | 撰写《项目总结报告》及PPT | manual | 1.67d | 2018-01-11 | 2018-01-12 | 101 | 2018-01-12 | 2018-01-12 | 0.5d | 陈启强 [70%] | 3.5h | 108.39 | 43.24 |
| 103 | 15.10 | 修改《项目总结报告》 | manual | 1d | 2018-01-16 | 2018-01-16 | 102 | 2018-01-13 | 2018-01-13 | 0.67d | 陈启强 [30%]; 李文杰 [30%]; 余泽伟 [30%]; 赵伟 [30%] | 3.6h | 111.49 | 46.13 |
| 104 | 15.11 | 评审 | manual | 0.5d | 2018-01-18 | 2018-01-18 | 103 | 2018-01-14 | 2018-01-14 | 0d | 陈启强; 李文杰; 余泽伟; 赵伟 | 6h | 185.82 |  |
